| UID | ID | Name | Type | IsNull | WBS | OutlineNumber | OutlineLevel | Priority | Start | Duration | DurationFormat | ResumeValid | EffortDriven | Recurring | OverAllocated | Estimated | Milestone | Summary | Critical | IsSubproject | IsSubprojectReadOnly | ExternalTask | FixedCostAccrual | PercentComplete | ActualStart | ActualDuration | RemainingDuration | ConstraintType | CalendarUID | LevelAssignments | LevelingCanSplit | IgnoreResourceCalendar | HideBar | Rollup | EarnedValueMethod | Active | Manual | Work |
| --- | --- | --- | --- | --- | --- | --- | --- | --- | --- | --- | --- | --- | --- | --- | --- | --- | --- | --- | --- | --- | --- | --- | --- | --- | --- | --- | --- | --- | --- | --- | --- | --- | --- | --- | --- | --- | --- | --- |
| 1 | 1 | Total estimate | 0 | 0 | 1 | 1 | 1 | 500 | 2026-04-13T09:00:00 | PT1848H0M0S | 3 | 0 | 0 | 0 | 0 | 0 | 0 | 1 | 0 | 0 | 0 | 0 | 3 | 47 | 2026-04-13T09:00:00 | PT868H33M36S | PT979H26M24S | 0 | 2 | 0 | 0 | 0 | 0 | 0 | 0 | 1 | 0 |  |
| 2 | 2 | Организация быта | 0 | 0 | 1.1 | 1.1 | 2 | 500 | 2026-04-13T09:00:00 | PT56H0M0S | 3 | 0 | 0 | 0 | 0 | 0 | 0 | 0 | 0 | 0 | 0 | 0 | 3 | 100 | 2026-04-13T09:00:00 | PT56H0M0S |  | 0 | 2 | 0 | 0 | 0 | 0 | 0 | 0 | 1 | 0 | PT0H56M0S |
| 3 | 3 | Демонтажные работы | 0 | 0 | 1.2 | 1.2 | 2 | 500 | 2026-04-13T09:00:00 | PT56H0M0S | 3 | 0 | 0 | 0 | 0 | 0 | 0 | 0 | 0 | 0 | 0 | 0 | 3 | 100 | 2026-04-13T09:00:00 | PT56H0M0S |  | 0 | 2 | 0 | 0 | 0 | 0 | 0 | 0 | 1 | 0 | PT0H56M0S |
| 4 | 4 | Утепление лоджии, пристенки | 0 | 0 | 1.3 | 1.3 | 2 | 500 | 2026-04-13T09:00:00 | PT56H0M0S | 3 | 0 | 0 | 0 | 0 | 0 | 0 | 0 | 0 | 0 | 0 | 0 | 3 | 100 | 2026-04-13T09:00:00 | PT56H0M0S |  | 0 | 2 | 0 | 0 | 0 | 0 | 0 | 0 | 1 | 0 | PT0H56M0S |
| 5 | 5 | Штукатурка | 0 | 0 | 1.4 | 1.4 | 2 | 500 | 2026-04-20T09:00:00 | PT56H0M0S | 3 | 0 | 0 | 0 | 0 | 0 | 0 | 0 | 0 | 0 | 0 | 0 | 3 | 100 | 2026-04-20T09:00:00 | PT56H0M0S |  | 0 | 2 | 0 | 0 | 0 | 0 | 0 | 0 | 1 | 0 | PT0H56M0S |
| 6 | 6 | Черновая сантехника | 0 | 0 | 1.5 | 1.5 | 2 | 500 | 2026-05-04T09:00:00 | PT112H0M0S | 3 | 0 | 0 | 0 | 0 | 0 | 0 | 0 | 0 | 0 | 0 | 0 | 3 | 100 | 2026-05-04T09:00:00 | PT112H0M0S |  | 0 | 2 | 0 | 0 | 0 | 0 | 0 | 0 | 1 | 0 | PT1H52M0S |
| 7 | 7 | АКТ 1 | 0 | 0 | 1.6 | 1.6 | 2 | 500 | 2026-04-27T09:00:00 | PT0H0M0S | 3 | 0 | 0 | 0 | 0 | 0 | 0 | 0 | 0 | 0 | 0 | 0 | 3 | 0 | 2026-04-27T09:00:00 |  |  | 0 | 2 | 0 | 0 | 0 | 0 | 0 | 0 | 1 | 0 |  |
| 8 | 8 | Установка каркаса перегородок | 0 | 0 | 1.7 | 1.7 | 2 | 500 | 2026-05-04T09:00:00 | PT112H0M0S | 3 | 0 | 0 | 0 | 0 | 0 | 0 | 0 | 0 | 0 | 0 | 0 | 3 | 100 | 2026-05-04T09:00:00 | PT112H0M0S |  | 0 | 2 | 0 | 0 | 0 | 0 | 0 | 0 | 1 | 0 | PT1H52M0S |
| 9 | 9 | Монтаж тёплого пола (питание) | 0 | 0 | 1.8 | 1.8 | 2 | 500 | 2026-08-03T09:00:00 | PT56H0M0S | 3 | 0 | 0 | 0 | 0 | 0 | 0 | 0 | 0 | 0 | 0 | 0 | 3 | 0 | 2026-08-03T09:00:00 |  | PT56H0M0S | 0 | 2 | 0 | 0 | 0 | 0 | 0 | 0 | 1 | 0 |  |
| 10 | 10 | Черновая электрика | 0 | 0 | 1.9 | 1.9 | 2 | 500 | 2026-05-25T09:00:00 | PT280H0M0S | 3 | 0 | 0 | 0 | 0 | 0 | 0 | 0 | 0 | 0 | 0 | 0 | 3 | 100 | 2026-05-25T09:00:00 | PT280H0M0S |  | 0 | 2 | 0 | 0 | 0 | 0 | 0 | 0 | 1 | 0 | PT4H40M0S |
| 11 | 11 | Наливной пол | 0 | 0 | 1.10 | 1.10 | 2 | 500 | 2026-05-18T09:00:00 | PT56H0M0S | 3 | 0 | 0 | 0 | 0 | 0 | 0 | 0 | 0 | 0 | 0 | 0 | 3 | 100 | 2026-05-18T09:00:00 | PT56H0M0S |  | 0 | 2 | 0 | 0 | 0 | 0 | 0 | 0 | 1 | 0 | PT0H56M0S |
| 12 | 12 | АКТ2 | 0 | 0 | 1.11 | 1.11 | 2 | 500 | 2026-05-18T09:00:00 | PT0H0M0S | 3 | 0 | 0 | 0 | 0 | 0 | 0 | 0 | 0 | 0 | 0 | 0 | 3 | 0 | 2026-05-18T09:00:00 |  |  | 0 | 2 | 0 | 0 | 0 | 0 | 0 | 0 | 1 | 0 |  |
| 13 | 13 | Прокладка трасс сплит системы | 0 | 0 | 1.12 | 1.12 | 2 | 500 | 2026-06-01T09:00:00 | PT56H0M0S | 3 | 0 | 0 | 0 | 0 | 0 | 0 | 0 | 0 | 0 | 0 | 0 | 3 | 100 | 2026-06-01T09:00:00 | PT56H0M0S |  | 0 | 2 | 0 | 0 | 0 | 0 | 0 | 0 | 1 | 0 |  |
| 14 | 14 | Установка дверей СМ | 0 | 0 | 1.13 | 1.13 | 2 | 500 | 2026-08-03T09:00:00 | PT56H0M0S | 3 | 0 | 0 | 0 | 0 | 0 | 0 | 0 | 0 | 0 | 0 | 0 | 3 | 0 | 2026-08-03T09:00:00 |  | PT56H0M0S | 0 | 2 | 0 | 0 | 0 | 0 | 0 | 0 | 1 | 0 |  |
| 15 | 15 | АКТ 3 | 0 | 0 | 1.14 | 1.14 | 2 | 500 | 2026-06-22T09:00:00 | PT0H0M0S | 3 | 0 | 0 | 0 | 0 | 0 | 0 | 0 | 0 | 0 | 0 | 0 | 3 | 0 | 2026-06-22T09:00:00 |  |  | 0 | 2 | 0 | 0 | 0 | 0 | 0 | 0 | 1 | 0 |  |
| 16 | 16 | Возведение перегородок | 0 | 0 | 1.15 | 1.15 | 2 | 500 | 2026-06-01T09:00:00 | PT280H0M0S | 3 | 0 | 0 | 0 | 0 | 0 | 0 | 0 | 0 | 0 | 0 | 0 | 3 | 100 | 2026-06-01T09:00:00 | PT280H0M0S |  | 0 | 2 | 0 | 0 | 0 | 0 | 0 | 0 | 1 | 0 | PT4H40M0S |
| 17 | 17 | Монтаж подоконников | 0 | 0 | 1.16 | 1.16 | 2 | 500 | 2026-08-10T09:00:00 | PT56H0M0S | 3 | 0 | 0 | 0 | 0 | 0 | 0 | 0 | 0 | 0 | 0 | 0 | 3 | 0 | 2026-08-10T09:00:00 |  | PT56H0M0S | 0 | 2 | 0 | 0 | 0 | 0 | 0 | 0 | 1 | 0 | PT0H56M0S |
| 18 | 18 | Эл. щит | 0 | 0 | 1.17 | 1.17 | 2 | 500 | 2026-07-13T09:00:00 | PT112H0M0S | 3 | 0 | 0 | 0 | 0 | 0 | 0 | 0 | 0 | 0 | 0 | 0 | 3 | 0 | 2026-07-13T09:00:00 |  | PT112H0M0S | 0 | 2 | 0 | 0 | 0 | 0 | 0 | 0 | 1 | 0 | PT1H52M0S |
| 19 | 19 | Приклеивание ГСП/Откосов | 0 | 0 | 1.18 | 1.18 | 2 | 500 | 2026-06-29T09:00:00 | PT56H0M0S | 3 | 0 | 0 | 0 | 0 | 0 | 0 | 0 | 0 | 0 | 0 | 0 | 3 | 100 | 2026-06-29T09:00:00 | PT56H0M0S |  | 0 | 2 | 0 | 0 | 0 | 0 | 0 | 0 | 1 | 0 | PT0H56M0S |
| 20 | 20 | Малярные работы | 0 | 0 | 1.19 | 1.19 | 2 | 500 | 2026-07-06T09:00:00 | PT224H0M0S | 3 | 0 | 0 | 0 | 0 | 0 | 0 | 0 | 0 | 0 | 0 | 0 | 3 | 0 | 2026-07-06T09:00:00 |  | PT224H0M0S | 0 | 2 | 0 | 0 | 0 | 0 | 0 | 0 | 1 | 0 | PT3H44M0S |
| 21 | 21 | Плиточные работы | 0 | 0 | 1.20 | 1.20 | 2 | 500 | 2026-08-31T09:00:00 | PT112H0M0S | 3 | 0 | 0 | 0 | 0 | 0 | 0 | 0 | 0 | 0 | 0 | 0 | 3 | 0 | 2026-08-31T09:00:00 |  | PT112H0M0S | 0 | 2 | 0 | 0 | 0 | 0 | 0 | 0 | 1 | 0 | PT1H52M0S |
| 22 | 22 | Подготовка, укладка и укрывка пола | 0 | 0 | 1.21 | 1.21 | 2 | 500 | 2026-09-14T09:00:00 | PT56H0M0S | 3 | 0 | 0 | 0 | 0 | 0 | 0 | 0 | 0 | 0 | 0 | 0 | 3 | 0 | 2026-09-14T09:00:00 |  | PT56H0M0S | 0 | 2 | 0 | 0 | 0 | 0 | 0 | 0 | 1 | 0 |  |
| 23 | 23 | Покраска, обои | 0 | 0 | 1.22 | 1.22 | 2 | 500 | 2026-09-21T09:00:00 | PT112H0M0S | 3 | 0 | 0 | 0 | 0 | 0 | 0 | 0 | 0 | 0 | 0 | 0 | 3 | 0 | 2026-09-21T09:00:00 |  | PT112H0M0S | 0 | 2 | 0 | 0 | 0 | 0 | 0 | 0 | 1 | 0 |  |
| 24 | 24 | АКТ4 | 0 | 0 | 1.23 | 1.23 | 2 | 500 | 2026-07-20T09:00:00 | PT0H0M0S | 3 | 0 | 0 | 0 | 0 | 0 | 0 | 0 | 0 | 0 | 0 | 0 | 3 | 0 | 2026-07-20T09:00:00 |  |  | 0 | 2 | 0 | 0 | 0 | 0 | 0 | 0 | 1 | 0 |  |
| 25 | 25 | Декоративная штукатурка | 0 | 0 | 1.24 | 1.24 | 2 | 500 | 2026-10-05T09:00:00 | PT56H0M0S | 3 | 0 | 0 | 0 | 0 | 0 | 0 | 0 | 0 | 0 | 0 | 0 | 3 | 0 | 2026-10-05T09:00:00 |  | PT56H0M0S | 0 | 2 | 0 | 0 | 0 | 0 | 0 | 0 | 1 | 0 |  |
| 26 | 26 | Чистовая электрика | 0 | 0 | 1.25 | 1.25 | 2 | 500 | 2026-10-12T09:00:00 | PT56H0M0S | 3 | 0 | 0 | 0 | 0 | 0 | 0 | 0 | 0 | 0 | 0 | 0 | 3 | 0 | 2026-10-12T09:00:00 |  | PT56H0M0S | 0 | 2 | 0 | 0 | 0 | 0 | 0 | 0 | 1 | 0 |  |
| 27 | 27 | Монтаж зеркал | 0 | 0 | 1.26 | 1.26 | 2 | 500 | 2026-10-12T09:00:00 | PT56H0M0S | 3 | 0 | 0 | 0 | 0 | 0 | 0 | 0 | 0 | 0 | 0 | 0 | 3 | 0 | 2026-10-12T09:00:00 |  | PT56H0M0S | 0 | 2 | 0 | 0 | 0 | 0 | 0 | 0 | 1 | 0 |  |
| 28 | 28 | Натяжной потолок | 0 | 0 | 1.27 | 1.27 | 2 | 500 | 2026-10-19T09:00:00 | PT112H0M0S | 3 | 0 | 0 | 0 | 0 | 0 | 0 | 0 | 0 | 0 | 0 | 0 | 3 | 0 | 2026-10-19T09:00:00 |  | PT112H0M0S | 0 | 2 | 0 | 0 | 0 | 0 | 0 | 0 | 1 | 0 |  |
| 29 | 29 | Установка дверей | 0 | 0 | 1.28 | 1.28 | 2 | 500 | 2026-11-02T09:00:00 | PT56H0M0S | 3 | 0 | 0 | 0 | 0 | 0 | 0 | 0 | 0 | 0 | 0 | 0 | 3 | 0 | 2026-11-02T09:00:00 |  | PT56H0M0S | 0 | 2 | 0 | 0 | 0 | 0 | 0 | 0 | 1 | 0 |  |
| 30 | 30 | Установка кухни | 0 | 0 | 1.29 | 1.29 | 2 | 500 | 2026-11-09T09:00:00 | PT56H0M0S | 3 | 0 | 0 | 0 | 0 | 0 | 0 | 0 | 0 | 0 | 0 | 0 | 3 | 0 | 2026-11-09T09:00:00 |  | PT56H0M0S | 0 | 2 | 0 | 0 | 0 | 0 | 0 | 0 | 1 | 0 |  |
| 31 | 31 | Установку мебели | 0 | 0 | 1.30 | 1.30 | 2 | 500 | 2026-11-16T09:00:00 | PT56H0M0S | 3 | 0 | 0 | 0 | 0 | 0 | 0 | 0 | 0 | 0 | 0 | 0 | 3 | 0 | 2026-11-16T09:00:00 |  | PT56H0M0S | 0 | 2 | 0 | 0 | 0 | 0 | 0 | 0 | 1 | 0 |  |
| 32 | 32 | Монтаж плинтуса | 0 | 0 | 1.31 | 1.31 | 2 | 500 | 2026-11-23T09:00:00 | PT56H0M0S | 3 | 0 | 0 | 0 | 0 | 0 | 0 | 0 | 0 | 0 | 0 | 0 | 3 | 0 | 2026-11-23T09:00:00 |  | PT56H0M0S | 0 | 2 | 0 | 0 | 0 | 0 | 0 | 0 | 1 | 0 |  |
| 33 | 33 | Чистовая сантехника | 0 | 0 | 1.32 | 1.32 | 2 | 500 | 2026-10-19T09:00:00 | PT56H0M0S | 3 | 0 | 0 | 0 | 0 | 0 | 0 | 0 | 0 | 0 | 0 | 0 | 3 | 0 | 2026-10-19T09:00:00 |  | PT56H0M0S | 0 | 2 | 0 | 0 | 0 | 0 | 0 | 0 | 1 | 0 |  |
| 34 | 34 | Срок в договоре | 0 | 0 | 1.33 | 1.33 | 2 | 500 | 2026-09-02T09:00:00 | PT0H0M0S | 3 | 0 | 0 | 0 | 0 | 0 | 0 | 0 | 0 | 0 | 0 | 0 | 3 | 0 | 2026-09-02T09:00:00 |  |  | 0 | 2 | 0 | 0 | 0 | 0 | 0 | 0 | 1 | 0 |  |
