| UID | ID | Name | Type | IsNull | WBS | OutlineNumber | OutlineLevel | Priority | Start | Duration | DurationFormat | ResumeValid | EffortDriven | Recurring | OverAllocated | Estimated | Milestone | Summary | Critical | IsSubproject | IsSubprojectReadOnly | ExternalTask | FixedCostAccrual | PercentComplete | ActualStart | ActualDuration | RemainingDuration | ConstraintType | CalendarUID | LevelAssignments | LevelingCanSplit | IgnoreResourceCalendar | HideBar | Rollup | EarnedValueMethod | Active | Manual | Work |
| --- | --- | --- | --- | --- | --- | --- | --- | --- | --- | --- | --- | --- | --- | --- | --- | --- | --- | --- | --- | --- | --- | --- | --- | --- | --- | --- | --- | --- | --- | --- | --- | --- | --- | --- | --- | --- | --- | --- |
| 1 | 1 | Total estimate | 0 | 0 | 1 | 1 | 1 | 500 | 2026-04-20T09:00:00 | PT976H0M0S | 3 | 0 | 0 | 0 | 0 | 0 | 0 | 1 | 0 | 0 | 0 | 0 | 3 | 75 | 2026-04-20T09:00:00 | PT732H0M0S | PT244H0M0S | 0 | 2 | 0 | 0 | 0 | 0 | 0 | 0 | 1 | 0 |  |
| 2 | 2 | Организация быта | 0 | 0 | 1.1 | 1.1 | 2 | 500 | 2026-04-20T09:00:00 | PT56H0M0S | 3 | 0 | 0 | 0 | 0 | 0 | 0 | 0 | 0 | 0 | 0 | 0 | 3 | 100 | 2026-04-20T09:00:00 | PT56H0M0S |  | 0 | 2 | 0 | 0 | 0 | 0 | 0 | 0 | 1 | 0 | PT0H56M0S |
| 3 | 3 | Штукатурка | 0 | 0 | 1.2 | 1.2 | 2 | 500 | 2026-04-20T09:00:00 | PT136H0M0S | 3 | 0 | 0 | 0 | 0 | 0 | 0 | 0 | 0 | 0 | 0 | 0 | 3 | 100 | 2026-04-20T09:00:00 | PT136H0M0S |  | 0 | 2 | 0 | 0 | 0 | 0 | 0 | 0 | 1 | 0 | PT2H16M0S |
| 4 | 4 | Каркас перегородок | 0 | 0 | 1.3 | 1.3 | 2 | 500 | 2026-05-04T09:00:00 | PT56H0M0S | 3 | 0 | 0 | 0 | 0 | 0 | 0 | 0 | 0 | 0 | 0 | 0 | 3 | 100 | 2026-05-04T09:00:00 | PT56H0M0S |  | 0 | 2 | 0 | 0 | 0 | 0 | 0 | 0 | 1 | 0 | PT0H56M0S |
| 5 | 5 | Облицовка, откосы | 0 | 0 | 1.4 | 1.4 | 2 | 500 | 2026-05-04T09:00:00 | PT56H0M0S | 3 | 0 | 0 | 0 | 0 | 0 | 0 | 0 | 0 | 0 | 0 | 0 | 3 | 100 | 2026-05-04T09:00:00 | PT56H0M0S |  | 0 | 2 | 0 | 0 | 0 | 0 | 0 | 0 | 1 | 0 | PT0H56M0S |
| 6 | 6 | Черновая сантехника | 0 | 0 | 1.5 | 1.5 | 2 | 500 | 2026-05-18T09:00:00 | PT56H0M0S | 3 | 0 | 0 | 0 | 0 | 0 | 0 | 0 | 0 | 0 | 0 | 0 | 3 | 100 | 2026-05-18T09:00:00 | PT56H0M0S |  | 0 | 2 | 0 | 0 | 0 | 0 | 0 | 0 | 1 | 0 | PT0H56M0S |
| 7 | 7 | Прокладка трасс сплит системы | 0 | 0 | 1.6 | 1.6 | 2 | 500 | 2026-05-25T09:00:00 | PT56H0M0S | 3 | 0 | 0 | 0 | 0 | 0 | 0 | 0 | 0 | 0 | 0 | 0 | 3 | 100 | 2026-05-25T09:00:00 | PT56H0M0S |  | 0 | 2 | 0 | 0 | 0 | 0 | 0 | 0 | 1 | 0 |  |
| 8 | 8 | Черновая электрика | 0 | 0 | 1.7 | 1.7 | 2 | 500 | 2026-05-25T09:00:00 | PT168H0M0S | 3 | 0 | 0 | 0 | 0 | 0 | 0 | 0 | 0 | 0 | 0 | 0 | 3 | 100 | 2026-05-25T09:00:00 | PT168H0M0S |  | 0 | 2 | 0 | 0 | 0 | 0 | 0 | 0 | 1 | 0 | PT2H48M0S |
| 9 | 9 | АКТ 1 | 0 | 0 | 1.8 | 1.8 | 2 | 500 | 2026-05-25T09:00:00 | PT0H0M0S | 3 | 0 | 0 | 0 | 0 | 0 | 0 | 0 | 0 | 0 | 0 | 0 | 3 | 0 | 2026-05-25T09:00:00 |  |  | 0 | 2 | 0 | 0 | 0 | 0 | 0 | 0 | 1 | 0 |  |
| 10 | 10 | Зашивка перегородок | 0 | 0 | 1.9 | 1.9 | 2 | 500 | 2026-06-01T09:00:00 | PT56H0M0S | 3 | 0 | 0 | 0 | 0 | 0 | 0 | 0 | 0 | 0 | 0 | 0 | 3 | 100 | 2026-06-01T09:00:00 | PT56H0M0S |  | 0 | 2 | 0 | 0 | 0 | 0 | 0 | 0 | 1 | 0 | PT0H56M0S |
| 11 | 11 | АКТ 2 | 0 | 0 | 1.10 | 1.10 | 2 | 500 | 2026-06-01T09:00:00 | PT0H0M0S | 3 | 0 | 0 | 0 | 0 | 0 | 0 | 0 | 0 | 0 | 0 | 0 | 3 | 0 | 2026-06-01T09:00:00 |  |  | 0 | 2 | 0 | 0 | 0 | 0 | 0 | 0 | 1 | 0 |  |
| 12 | 12 | Плиточные работы | 0 | 0 | 1.11 | 1.11 | 2 | 500 | 2026-06-01T09:00:00 | PT56H0M0S | 3 | 0 | 0 | 0 | 0 | 0 | 0 | 0 | 0 | 0 | 0 | 0 | 3 | 100 | 2026-06-01T09:00:00 | PT56H0M0S |  | 0 | 2 | 0 | 0 | 0 | 0 | 0 | 0 | 1 | 0 | PT0H28M0S |
| 13 | 13 | Малярные работы | 0 | 0 | 1.12 | 1.12 | 2 | 500 | 2026-06-08T09:00:00 | PT112H0M0S | 3 | 0 | 0 | 0 | 0 | 0 | 0 | 0 | 0 | 0 | 0 | 0 | 3 | 100 | 2026-06-08T09:00:00 | PT112H0M0S |  | 0 | 2 | 0 | 0 | 0 | 0 | 0 | 0 | 1 | 0 | PT1H52M0S |
| 14 | 14 | Покраска, обои | 0 | 0 | 1.13 | 1.13 | 2 | 500 | 2026-06-15T09:00:00 | PT56H0M0S | 3 | 0 | 0 | 0 | 0 | 0 | 0 | 0 | 0 | 0 | 0 | 0 | 3 | 100 | 2026-06-15T09:00:00 | PT56H0M0S |  | 0 | 2 | 0 | 0 | 0 | 0 | 0 | 0 | 1 | 0 | PT0H56M0S |
| 15 | 15 | АКТ 3 | 0 | 0 | 1.14 | 1.14 | 2 | 500 | 2026-06-15T09:00:00 | PT0H0M0S | 3 | 0 | 0 | 0 | 0 | 0 | 0 | 0 | 0 | 0 | 0 | 0 | 3 | 100 | 2026-06-15T09:00:00 |  |  | 0 | 2 | 0 | 0 | 0 | 0 | 0 | 0 | 1 | 0 |  |
| 16 | 16 | Чистовая электрика | 0 | 0 | 1.15 | 1.15 | 2 | 500 | 2026-06-22T09:00:00 | PT56H0M0S | 3 | 0 | 0 | 0 | 0 | 0 | 0 | 0 | 0 | 0 | 0 | 0 | 3 | 100 | 2026-06-22T09:00:00 | PT56H0M0S |  | 0 | 2 | 0 | 0 | 0 | 0 | 0 | 0 | 1 | 0 | PT0H56M0S |
| 17 | 17 | АКТ 4 | 0 | 0 | 1.16 | 1.16 | 2 | 500 | 2026-07-06T09:00:00 | PT0H0M0S | 3 | 0 | 0 | 0 | 0 | 0 | 0 | 0 | 0 | 0 | 0 | 0 | 3 | 0 | 2026-07-06T09:00:00 |  |  | 0 | 2 | 0 | 0 | 0 | 0 | 0 | 0 | 1 | 0 |  |
| 18 | 18 | Натяжной потолок | 0 | 0 | 1.17 | 1.17 | 2 | 500 | 2026-06-29T09:00:00 | PT56H0M0S | 3 | 0 | 0 | 0 | 0 | 0 | 0 | 0 | 0 | 0 | 0 | 0 | 3 | 100 | 2026-06-29T09:00:00 | PT56H0M0S |  | 0 | 2 | 0 | 0 | 0 | 0 | 0 | 0 | 1 | 0 | PT0H56M0S |
| 19 | 19 | Подготовка, укладка и укрывка пола | 0 | 0 | 1.18 | 1.18 | 2 | 500 | 2026-07-06T09:00:00 | PT56H0M0S | 3 | 0 | 0 | 0 | 0 | 0 | 0 | 0 | 0 | 0 | 0 | 0 | 3 | 100 | 2026-07-06T09:00:00 | PT56H0M0S |  | 0 | 2 | 0 | 0 | 0 | 0 | 0 | 0 | 1 | 0 | PT0H56M0S |
| 20 | 20 | Монтаж, отделка, покраска молдингов | 0 | 0 | 1.19 | 1.19 | 2 | 500 | 2026-08-03T09:00:00 | PT56H0M0S | 3 | 0 | 0 | 0 | 0 | 0 | 0 | 0 | 0 | 0 | 0 | 0 | 3 | 0 | 2026-08-03T09:00:00 |  | PT56H0M0S | 0 | 2 | 0 | 0 | 0 | 0 | 0 | 0 | 1 | 0 | PT0H56M0S |
| 21 | 21 | Установка кухни | 0 | 0 | 1.20 | 1.20 | 2 | 500 | 2026-07-13T09:00:00 | PT56H0M0S | 3 | 0 | 0 | 0 | 0 | 0 | 0 | 0 | 0 | 0 | 0 | 0 | 3 | 0 | 2026-07-13T09:00:00 |  | PT56H0M0S | 0 | 2 | 0 | 0 | 0 | 0 | 0 | 0 | 1 | 0 |  |
| 22 | 22 | Монтаж дверей | 0 | 0 | 1.21 | 1.21 | 2 | 500 | 2026-07-27T09:00:00 | PT56H0M0S | 3 | 0 | 0 | 0 | 0 | 0 | 0 | 0 | 0 | 0 | 0 | 0 | 3 | 0 | 2026-07-27T09:00:00 |  | PT56H0M0S | 0 | 2 | 0 | 0 | 0 | 0 | 0 | 0 | 1 | 0 |  |
| 23 | 23 | Установка мебели | 0 | 0 | 1.22 | 1.22 | 2 | 500 | 2026-07-20T09:00:00 | PT56H0M0S | 3 | 0 | 0 | 0 | 0 | 0 | 0 | 0 | 0 | 0 | 0 | 0 | 3 | 0 | 2026-07-20T09:00:00 |  | PT56H0M0S | 0 | 2 | 0 | 0 | 0 | 0 | 0 | 0 | 1 | 0 |  |
| 24 | 24 | Монтаж плинтуса | 0 | 0 | 1.23 | 1.23 | 2 | 500 | 2026-08-03T09:00:00 | PT56H0M0S | 3 | 0 | 0 | 0 | 0 | 0 | 0 | 0 | 0 | 0 | 0 | 0 | 3 | 0 | 2026-08-03T09:00:00 |  | PT56H0M0S | 0 | 2 | 0 | 0 | 0 | 0 | 0 | 0 | 1 | 0 | PT0H56M0S |
| 25 | 25 | Чистовая сантехника | 0 | 0 | 1.24 | 1.24 | 2 | 500 | 2026-08-10T09:00:00 | PT56H0M0S | 3 | 0 | 0 | 0 | 0 | 0 | 0 | 0 | 0 | 0 | 0 | 0 | 3 | 0 | 2026-08-10T09:00:00 |  | PT56H0M0S | 0 | 2 | 0 | 0 | 0 | 0 | 0 | 0 | 1 | 0 | PT0H56M0S |
| 26 | 26 | Срок в договоре | 0 | 0 | 1.25 | 1.25 | 2 | 500 | 2026-08-20T09:00:00 | PT0H0M0S | 3 | 0 | 0 | 0 | 0 | 0 | 0 | 0 | 0 | 0 | 0 | 0 | 3 | 0 | 2026-08-20T09:00:00 |  |  | 0 | 2 | 0 | 0 | 0 | 0 | 0 | 0 | 1 | 0 |  |
