| UID | ID | Name | Type | IsNull | WBS | OutlineNumber | OutlineLevel | Priority | Start | Duration | DurationFormat | ResumeValid | EffortDriven | Recurring | OverAllocated | Estimated | Milestone | Summary | Critical | IsSubproject | IsSubprojectReadOnly | ExternalTask | FixedCostAccrual | PercentComplete | ActualStart | ActualDuration | RemainingDuration | ConstraintType | CalendarUID | LevelAssignments | LevelingCanSplit | IgnoreResourceCalendar | HideBar | Rollup | EarnedValueMethod | Active | Manual | Work |
| --- | --- | --- | --- | --- | --- | --- | --- | --- | --- | --- | --- | --- | --- | --- | --- | --- | --- | --- | --- | --- | --- | --- | --- | --- | --- | --- | --- | --- | --- | --- | --- | --- | --- | --- | --- | --- | --- | --- |
| 1 | 1 | Total estimate | 0 | 0 | 1 | 1 | 1 | 500 | 2025-11-03T09:00:00 | PT2240H0M0S | 3 | 0 | 0 | 0 | 0 | 0 | 0 | 1 | 0 | 0 | 0 | 0 | 3 | 78 | 2025-11-03T09:00:00 | PT1747H12M0S | PT492H48M0S | 0 | 2 | 0 | 0 | 0 | 0 | 0 | 0 | 1 | 0 |  |
| 2 | 2 | Организация быта | 0 | 0 | 1.1 | 1.1 | 2 | 500 | 2025-11-03T09:00:00 | PT56H0M0S | 3 | 0 | 0 | 0 | 0 | 0 | 0 | 0 | 0 | 0 | 0 | 0 | 3 | 100 | 2025-11-03T09:00:00 | PT56H0M0S |  | 0 | 2 | 0 | 0 | 0 | 0 | 0 | 0 | 1 | 0 | PT0H56M0S |
| 3 | 3 | Демонтажные работы | 0 | 0 | 1.2 | 1.2 | 2 | 500 | 2025-11-10T09:00:00 | PT112H0M0S | 3 | 0 | 0 | 0 | 0 | 0 | 0 | 0 | 0 | 0 | 0 | 0 | 3 | 100 | 2025-11-10T09:00:00 | PT112H0M0S |  | 0 | 2 | 0 | 0 | 0 | 0 | 0 | 0 | 1 | 0 | PT1H52M0S |
| 4 | 4 | Черновая электрика | 0 | 0 | 1.3 | 1.3 | 2 | 500 | 2025-11-24T09:00:00 | PT168H0M0S | 3 | 0 | 0 | 0 | 0 | 0 | 0 | 0 | 0 | 0 | 0 | 0 | 3 | 100 | 2025-11-24T09:00:00 | PT168H0M0S |  | 0 | 2 | 0 | 0 | 0 | 0 | 0 | 0 | 1 | 0 | PT2H48M0S |
| 5 | 5 | Прокладка трасс сплит системы | 0 | 0 | 1.4 | 1.4 | 2 | 500 | 2025-11-17T09:00:00 | PT56H0M0S | 3 | 0 | 0 | 0 | 0 | 0 | 0 | 0 | 0 | 0 | 0 | 0 | 3 | 100 | 2025-11-17T09:00:00 | PT56H0M0S |  | 0 | 2 | 0 | 0 | 0 | 0 | 0 | 0 | 1 | 0 |  |
| 6 | 6 | Монтаж подоконников | 0 | 0 | 1.5 | 1.5 | 2 | 500 | 2026-02-09T09:00:00 | PT56H0M0S | 3 | 0 | 0 | 0 | 0 | 0 | 0 | 0 | 0 | 0 | 0 | 0 | 3 | 100 | 2026-02-09T09:00:00 | PT56H0M0S |  | 0 | 2 | 0 | 0 | 0 | 0 | 0 | 0 | 1 | 0 |  |
| 7 | 7 | Штукатурка | 0 | 0 | 1.6 | 1.6 | 2 | 500 | 2025-12-15T09:00:00 | PT112H0M0S | 3 | 0 | 0 | 0 | 0 | 0 | 0 | 0 | 0 | 0 | 0 | 0 | 3 | 100 | 2025-12-15T09:00:00 | PT112H0M0S |  | 0 | 2 | 0 | 0 | 0 | 0 | 0 | 0 | 1 | 0 | PT1H52M0S |
| 8 | 8 | АКТ 1 | 0 | 0 | 1.7 | 1.7 | 2 | 500 | 2026-01-26T09:00:00 | PT0H0M0S | 3 | 0 | 0 | 0 | 0 | 0 | 0 | 0 | 0 | 0 | 0 | 0 | 3 | 100 | 2026-01-26T09:00:00 |  |  | 0 | 2 | 0 | 0 | 0 | 0 | 0 | 0 | 1 | 0 |  |
| 9 | 9 | Новый год | 0 | 0 | 1.8 | 1.8 | 2 | 500 | 2025-12-29T09:00:00 | PT56H0M0S | 3 | 0 | 0 | 0 | 0 | 0 | 0 | 0 | 0 | 0 | 0 | 0 | 3 | 100 | 2025-12-29T09:00:00 | PT56H0M0S |  | 0 | 2 | 0 | 0 | 0 | 0 | 0 | 0 | 1 | 0 |  |
| 10 | 10 | Черновая сантехника | 0 | 0 | 1.9 | 1.9 | 2 | 500 | 2026-01-19T09:00:00 | PT56H0M0S | 3 | 0 | 0 | 0 | 0 | 0 | 0 | 0 | 0 | 0 | 0 | 0 | 3 | 100 | 2026-01-19T09:00:00 | PT56H0M0S |  | 0 | 2 | 0 | 0 | 0 | 0 | 0 | 0 | 1 | 0 | PT0H56M0S |
| 11 | 11 | Черновая электрика | 0 | 0 | 1.10 | 1.10 | 2 | 500 | 2026-02-16T09:00:00 | PT55H59M0S | 3 | 0 | 0 | 0 | 0 | 0 | 0 | 0 | 0 | 0 | 0 | 0 | 3 | 100 | 2026-02-16T09:00:00 | PT55H59M0S |  | 0 | 2 | 0 | 0 | 0 | 0 | 0 | 0 | 1 | 0 | PT0H55M59S |
| 12 | 12 | Установка щита | 0 | 0 | 1.11 | 1.11 | 2 | 500 | 2026-06-08T09:00:00 | PT56H0M0S | 3 | 0 | 0 | 0 | 0 | 0 | 0 | 0 | 0 | 0 | 0 | 0 | 3 | 100 | 2026-06-08T09:00:00 | PT56H0M0S |  | 0 | 2 | 0 | 0 | 0 | 0 | 0 | 0 | 1 | 0 | PT0H56M0S |
| 13 | 13 | Монтаж тёплого пола | 0 | 0 | 1.12 | 1.12 | 2 | 500 | 2026-01-26T09:00:00 | PT56H0M0S | 3 | 0 | 0 | 0 | 0 | 0 | 0 | 0 | 0 | 0 | 0 | 0 | 3 | 100 | 2026-01-26T09:00:00 | PT56H0M0S |  | 0 | 2 | 0 | 0 | 0 | 0 | 0 | 0 | 1 | 0 | PT0H56M0S |
| 14 | 14 | Наливной пол | 0 | 0 | 1.13 | 1.13 | 2 | 500 | 2026-01-26T09:00:00 | PT56H0M0S | 3 | 0 | 0 | 0 | 0 | 0 | 0 | 0 | 0 | 0 | 0 | 0 | 3 | 100 | 2026-01-26T09:00:00 | PT56H0M0S |  | 0 | 2 | 0 | 0 | 0 | 0 | 0 | 0 | 1 | 0 | PT0H56M0S |
| 15 | 15 | АКТ 2 | 0 | 0 | 1.14 | 1.14 | 2 | 500 | 2026-02-09T09:00:00 | PT0H0M0S | 3 | 0 | 0 | 0 | 0 | 0 | 0 | 0 | 0 | 0 | 0 | 0 | 3 | 0 | 2026-02-09T09:00:00 |  |  | 0 | 2 | 0 | 0 | 0 | 0 | 0 | 0 | 1 | 0 |  |
| 16 | 16 | Плиточные работы | 0 | 0 | 1.15 | 1.15 | 2 | 500 | 2026-02-09T09:00:00 | PT112H0M0S | 3 | 0 | 0 | 0 | 0 | 0 | 0 | 0 | 0 | 0 | 0 | 0 | 3 | 100 | 2026-02-09T09:00:00 | PT112H0M0S |  | 0 | 2 | 0 | 0 | 0 | 0 | 0 | 0 | 1 | 0 | PT1H52M0S |
| 17 | 17 | Короба, перегородки, откосы | 0 | 0 | 1.16 | 1.16 | 2 | 500 | 2026-02-02T09:00:00 | PT56H0M0S | 3 | 0 | 0 | 0 | 0 | 0 | 0 | 0 | 0 | 0 | 0 | 0 | 3 | 100 | 2026-02-02T09:00:00 | PT56H0M0S |  | 0 | 2 | 0 | 0 | 0 | 0 | 0 | 0 | 1 | 0 | PT0H56M0S |
| 18 | 18 | АКТ 3 | 0 | 0 | 1.17 | 1.17 | 2 | 500 | 2026-02-23T09:00:00 | PT0H0M0S | 3 | 0 | 0 | 0 | 0 | 0 | 0 | 0 | 0 | 0 | 0 | 0 | 3 | 0 | 2026-02-23T09:00:00 |  |  | 0 | 2 | 0 | 0 | 0 | 0 | 0 | 0 | 1 | 0 |  |
| 19 | 19 | Малярные работы | 0 | 0 | 1.18 | 1.18 | 2 | 500 | 2026-02-23T09:00:00 | PT56H0M0S | 3 | 0 | 0 | 0 | 0 | 0 | 0 | 0 | 0 | 0 | 0 | 0 | 3 | 100 | 2026-02-23T09:00:00 | PT56H0M0S |  | 0 | 2 | 0 | 0 | 0 | 0 | 0 | 0 | 1 | 0 | PT0H56M0S |
| 20 | 20 | Подготовка, укладка и укрывка пола | 0 | 0 | 1.19 | 1.19 | 2 | 500 | 2026-03-02T09:00:00 | PT56H0M0S | 3 | 0 | 0 | 0 | 0 | 0 | 0 | 0 | 0 | 0 | 0 | 0 | 3 | 100 | 2026-03-02T09:00:00 | PT56H0M0S |  | 0 | 2 | 0 | 0 | 0 | 0 | 0 | 0 | 1 | 0 | PT0H56M0S |
| 21 | 21 | Переклейка обоев | 0 | 0 | 1.20 | 1.20 | 2 | 500 | 2026-05-18T09:00:00 | PT56H0M0S | 3 | 0 | 0 | 0 | 0 | 0 | 0 | 0 | 0 | 0 | 0 | 0 | 3 | 100 | 2026-05-18T09:00:00 | PT56H0M0S |  | 0 | 2 | 0 | 0 | 0 | 0 | 0 | 0 | 1 | 0 |  |
| 22 | 22 | Покраска, обои | 0 | 0 | 1.21 | 1.21 | 2 | 500 | 2026-03-09T09:00:00 | PT56H0M0S | 3 | 0 | 0 | 0 | 0 | 0 | 0 | 0 | 0 | 0 | 0 | 0 | 3 | 100 | 2026-03-09T09:00:00 | PT56H0M0S |  | 0 | 2 | 0 | 0 | 0 | 0 | 0 | 0 | 1 | 0 | PT0H56M0S |
| 23 | 23 | Натяжной потолок | 0 | 0 | 1.22 | 1.22 | 2 | 500 | 2026-06-15T09:00:00 | PT56H0M0S | 3 | 0 | 0 | 0 | 0 | 0 | 0 | 0 | 0 | 0 | 0 | 0 | 3 | 100 | 2026-06-15T09:00:00 | PT56H0M0S |  | 0 | 2 | 0 | 0 | 0 | 0 | 0 | 0 | 1 | 0 | PT0H56M0S |
| 24 | 24 | Чистовая электрика | 0 | 0 | 1.23 | 1.23 | 2 | 500 | 2026-06-01T09:00:00 | PT56H0M0S | 3 | 0 | 0 | 0 | 0 | 0 | 0 | 0 | 0 | 0 | 0 | 0 | 3 | 100 | 2026-06-01T09:00:00 | PT56H0M0S |  | 0 | 2 | 0 | 0 | 0 | 0 | 0 | 0 | 1 | 0 | PT0H56M0S |
| 25 | 25 | АКТ 4 | 0 | 0 | 1.24 | 1.24 | 2 | 500 | 2026-05-11T09:00:00 | PT0H0M0S | 3 | 0 | 0 | 0 | 0 | 0 | 0 | 0 | 0 | 0 | 0 | 0 | 3 | 0 | 2026-05-11T09:00:00 |  |  | 0 | 2 | 0 | 0 | 0 | 0 | 0 | 0 | 1 | 0 |  |
| 26 | 26 | Установка дверей | 0 | 0 | 1.25 | 1.25 | 2 | 500 | 2026-07-27T09:00:00 | PT56H0M0S | 3 | 0 | 0 | 0 | 0 | 0 | 0 | 0 | 0 | 0 | 0 | 0 | 3 | 0 | 2026-07-27T09:00:00 |  | PT56H0M0S | 0 | 2 | 0 | 0 | 0 | 0 | 0 | 0 | 1 | 0 |  |
| 27 | 27 | Установка мебели | 0 | 0 | 1.26 | 1.26 | 2 | 500 | 2026-06-22T09:00:00 | PT224H0M0S | 3 | 0 | 0 | 0 | 0 | 0 | 0 | 0 | 0 | 0 | 0 | 0 | 3 | 0 | 2026-06-22T09:00:00 |  | PT224H0M0S | 0 | 2 | 0 | 0 | 0 | 0 | 0 | 0 | 1 | 0 |  |
| 28 | 28 | Монтаж, отделка, покраска плинтуса и молдингов | 0 | 0 | 1.27 | 1.27 | 2 | 500 | 2026-08-03T09:00:00 | PT56H0M0S | 3 | 0 | 0 | 0 | 0 | 0 | 0 | 0 | 0 | 0 | 0 | 0 | 3 | 0 | 2026-08-03T09:00:00 |  | PT56H0M0S | 0 | 2 | 0 | 0 | 0 | 0 | 0 | 0 | 1 | 0 | PT0H56M0S |
| 29 | 29 | Чистовая сантехника | 0 | 0 | 1.28 | 1.28 | 2 | 500 | 2026-08-03T09:00:00 | PT56H0M0S | 3 | 0 | 0 | 0 | 0 | 0 | 0 | 0 | 0 | 0 | 0 | 0 | 3 | 0 | 2026-08-03T09:00:00 |  | PT56H0M0S | 0 | 2 | 0 | 0 | 0 | 0 | 0 | 0 | 1 | 0 | PT0H56M0S |
| 30 | 30 | Срок в договоре | 0 | 0 | 1.29 | 1.29 | 2 | 500 | 2026-06-22T09:00:00 | PT0H0M0S | 3 | 0 | 0 | 0 | 0 | 0 | 0 | 0 | 0 | 0 | 0 | 0 | 3 | 0 | 2026-06-22T09:00:00 |  |  | 0 | 2 | 0 | 0 | 0 | 0 | 0 | 0 | 1 | 0 |  |
